# Annual Report Preparation

Schedule from MS Project, 2020-08-03 to 2020-09-30.

## Calendars

- Standard: Mon-Fri 08:00-12:00, 13:00-17:00; Sat-Sun off.

## Resources

| Resource |
| --- |
| Strategic Planning Committee |
| CFO/Controller |
| Audit Committee |
| PR/IR Dept |
| Chairman |
| External Auditors |
| Legal Department |

## Schedule

| ID | WBS | Task | Type | Duration | Start | Finish | Predecessors | Total slack | Free slack | Resources | Work |
| --- | --- | --- | --- | --- | --- | --- | --- | --- | --- | --- | --- |
| 1 | 1 | **Perform Initial Planning** |  | 6d? | 2020-08-03 | 2020-08-10 |  | 0d |  |  | 48h |
| 2 | 1.1 | Review project file/lessons learned from last year's Annual Report process |  | 1d? | 2020-08-03 | 2020-08-03 |  | 0d |  | Strategic Planning Committee | 8h |
| 3 | 1.2 | Confirm changes, if any, to financial reporting requirements |  | 1d? | 2020-08-04 | 2020-08-04 | 2 | 0d |  | CFO/Controller | 8h |
| 4 | 1.3 | Identify Annual Report Theme and Section Requirements |  | 1d? | 2020-08-05 | 2020-08-05 | 3 | 0d |  | Strategic Planning Committee | 8h |
| 5 | 1.4 | Confirm other sections to be added or removed |  | 1d? | 2020-08-06 | 2020-08-06 | 4 | 0d |  | Strategic Planning Committee | 8h |
| 6 | 1.5 | Confirm SEC filing and Annual Report Checkpoints |  | 1d? | 2020-08-07 | 2020-08-07 | 5 | 0d |  | CFO/Controller | 8h |
| 7 | 1.6 | Selection of Internal Auditors |  | 1d? | 2020-08-10 | 2020-08-10 | 6 | 0d |  | Audit Committee | 8h |
| 8 | 1.7 | Initial Planning Complete | milestone | 0d | 2020-08-10 | 2020-08-10 | 7 | 0d |  |  |  |
| 9 | 2 | **Design Annual Report** |  | 6d? | 2020-08-11 | 2020-08-18 |  | 0d |  |  | 48h |
| 10 | 2.1 | Assign resources to preliminary design |  | 1d? | 2020-08-11 | 2020-08-11 | 8 | 0d |  | Strategic Planning Committee | 8h |
| 11 | 2.2 | Develop preliminary design and information requirements |  | 1d? | 2020-08-12 | 2020-08-12 | 10 | 0d |  | Strategic Planning Committee | 8h |
| 12 | 2.3 | **Evaluate/Confirm Report Distribution Mechanisms** |  | 3d? | 2020-08-13 | 2020-08-17 |  | 0d |  |  | 24h |
| 13 | 2.3.1 | Evaluate/confirm Annual Report design and communications vendor(s) |  | 1d? | 2020-08-13 | 2020-08-13 | 11 | 0d |  | PR/IR Dept | 8h |
| 14 | 2.3.2 | Evaluate/confirm corporate Web site design and integration requirements |  | 1d? | 2020-08-14 | 2020-08-14 | 13 | 0d |  | PR/IR Dept | 8h |
| 15 | 2.3.3 | Evaluate/confirm Annual Report production and mailing vendor(s) |  | 1d? | 2020-08-17 | 2020-08-17 | 14 | 0d |  | PR/IR Dept | 8h |
| 16 | 2.3.4 | Report Distribution Mechanisms Confirmed | milestone | 0d | 2020-08-17 | 2020-08-17 | 15 | 0d |  | PR/IR Dept |  |
| 17 | 2.4 | Plan/confirm production schedule |  | 1d? | 2020-08-18 | 2020-08-18 | 16 | 0d |  | PR/IR Dept | 8h |
| 18 | 2.5 | Annual Report Design Complete | milestone | 0d | 2020-08-18 | 2020-08-18 | 17 | 0d |  |  |  |
| 19 | 3 | **Define SEC 10-K and Proxy Documentation Production Schedules** |  | 3d? | 2020-08-19 | 2020-08-21 |  | 0d |  |  | 24h |
| 20 | 3.1 | Plan/confirm 10-K production schedule |  | 1d? | 2020-08-19 | 2020-08-19 | 18 | 0d |  | CFO/Controller | 8h |
| 21 | 3.2 | Plan/confirm Proxy Statement production schedule |  | 1d? | 2020-08-20 | 2020-08-20 | 20 | 0d |  | CFO/Controller | 8h |
| 22 | 3.3 | Identify process steps required to meet production schedule |  | 1d? | 2020-08-21 | 2020-08-21 | 21 | 0d |  | CFO/Controller | 8h |
| 23 | 3.4 | SEC 10-K and Proxy Documentation Production Schedules Complete | milestone | 0d | 2020-08-21 | 2020-08-21 | 22 | 0d |  |  |  |
| 24 | 4 | **Develop Annual Report** |  | 22d? | 2020-08-24 | 2020-09-22 |  | 5.5d | 0d |  | 216h |
| 25 | 4.1 | **Develop Theme production components** |  | 7d? | 2020-08-24 | 2020-09-01 |  | 16.5d | 0d |  | 56h |
| 26 | 4.1.1 | Schedule and hold Theme development sessions |  | 1d? | 2020-08-24 | 2020-08-24 | 23 | 16.5d | 0d | PR/IR Dept | 8h |
| 27 | 4.1.2 | Gather Theme statistics/validate Theme messages |  | 1d? | 2020-08-25 | 2020-08-25 | 26 | 16.5d | 0d | PR/IR Dept | 8h |
| 28 | 4.1.3 | Interview Theme Stakeholders |  | 1d? | 2020-08-26 | 2020-08-26 | 27 | 16.5d | 0d | PR/IR Dept | 8h |
| 29 | 4.1.4 | Develop initial Theme section writeups |  | 1d? | 2020-08-27 | 2020-08-27 | 28 | 16.5d | 0d | PR/IR Dept | 8h |
| 30 | 4.1.5 | Schedule Theme Photo and Web Site Design Sessions |  | 1d? | 2020-08-28 | 2020-08-28 | 29 | 16.5d | 0d | PR/IR Dept | 8h |
| 31 | 4.1.6 | Validate Theme facts |  | 1d? | 2020-08-31 | 2020-08-31 | 30 | 16.5d | 0d | PR/IR Dept | 8h |
| 32 | 4.1.7 | Finalize Theme design and writeups with executive leadership |  | 1d? | 2020-09-01 | 2020-09-01 | 31 | 16.5d | 0d | PR/IR Dept | 8h |
| 33 | 4.1.8 | Theme production complete | milestone | 0d | 2020-09-01 | 2020-09-01 | 32 | 16.5d | 0d |  |  |

| ID | WBS | Task | Type | Duration | Start | Finish | Predecessors | Total slack | Free slack | Resources | Work |
| --- | --- | --- | --- | --- | --- | --- | --- | --- | --- | --- | --- |
| 34 | 4.2 | **Develop Letter to the Shareholders** |  | 15d? | 2020-09-02 | 2020-09-22 |  | 5.5d | 0d |  | 40h |
| 35 | 4.2.1 | Plan interview with Chairman/CEO |  | 1d? | 2020-09-02 | 2020-09-02 | 33 | 16.5d | 0d | PR/IR Dept | 8h |
| 36 | 4.2.2 | Conduct Interview |  | 1d? | 2020-09-03 | 2020-09-03 | 35 | 16.5d | 0d | PR/IR Dept; Chairman | 16h |
| 37 | 4.2.3 | Build and review letter |  | 1d? | 2020-09-04 | 2020-09-04 | 36 | 16.5d | 0d | PR/IR Dept | 8h |
| 38 | 4.2.4 | Review letter in context with audited financial results |  | 1d? | 2020-09-22 | 2020-09-22 | 37, 83 | 5.5d | 0d | PR/IR Dept | 8h |
| 39 | 4.2.5 | Letter to the Shareholders Complete | milestone | 0d | 2020-09-22 | 2020-09-22 | 38 | 5.5d | 0d |  |  |
| 40 | 4.3 | **Define Public and Investor Relations Focused Components** |  | 10.5d? | 2020-09-08 | 2020-09-22 |  | 0d |  |  | 120h |
| 41 | 4.3.1 | **Set PR and IR Milestones** |  | 0.5d | 2020-09-08 | 2020-09-08 |  | 0d |  |  | 4h |
| 42 | 4.3.1.1 | Define major PR and IR milestones (alignment with deliverables) |  | 0.5d | 2020-09-08 | 2020-09-08 | 76 | 0d |  | PR/IR Dept | 4h |
| 43 | 4.3.2 | **Develop Public Relations Messaging** |  | 3.5d | 2020-09-08 | 2020-09-11 |  | 11d | 0d |  | 28h |
| 44 | 4.3.2.1 | Define PR messaging for inclusion in Annual Report |  | 0.5d | 2020-09-08 | 2020-09-08 | 42 | 11d | 0d | PR/IR Dept | 4h |
| 45 | 4.3.2.2 | Define PR messaging about Financial Results |  | 2d | 2020-09-09 | 2020-09-10 | 44 | 11d | 0d | PR/IR Dept | 16h |
| 46 | 4.3.2.3 | Refine distribution channels and timeline |  | 1d | 2020-09-11 | 2020-09-11 | 45 | 11d | 0d | PR/IR Dept | 8h |
| 47 | 4.3.3 | **Develop Investor Relations Messaging** |  | 10d? | 2020-09-08 | 2020-09-22 |  | 0d |  |  | 88h |
| 48 | 4.3.3.1 | Define IR messaging for Annual Report |  | 2d | 2020-09-08 | 2020-09-10 | 42 | 9.5d | 0d | PR/IR Dept | 16h |
| 49 | 4.3.3.2 | Define IR messaging about Financial Results |  | 2d | 2020-09-10 | 2020-09-14 | 48 | 9.5d | 0d | PR/IR Dept | 16h |
| 50 | 4.3.3.3 | Confirm distribution lists and channels for Annual Report reporting |  | 2d | 2020-09-14 | 2020-09-16 | 49 | 9.5d | 0d | PR/IR Dept | 16h |
| 51 | 4.3.3.4 | Obtain financial results from CFO |  | 0.5d? | 2020-09-22 | 2020-09-22 | 50, 83 | 6d | 0d | PR/IR Dept; CFO/Controller | 8h |
| 52 | 4.3.3.5 | **Confirm mailing list acquisition and distribution process for shareholders** |  | 4d? | 2020-09-08 | 2020-09-14 |  | 0d |  |  | 32h |
| 53 | 4.3.3.5.1 | Confirm institutional distribution list/process |  | 1d? | 2020-09-08 | 2020-09-09 | 42 | 0d |  | PR/IR Dept | 8h |
| 54 | 4.3.3.5.2 | Confirm brokerage distribution list/process |  | 1d? | 2020-09-09 | 2020-09-10 | 53 | 0d |  | PR/IR Dept | 8h |
| 55 | 4.3.3.5.3 | Confirm individual investor distribution list/process |  | 1d? | 2020-09-10 | 2020-09-11 | 54 | 0d |  | PR/IR Dept | 8h |
| 56 | 4.3.3.5.4 | Confirm corporate Web site update/format/posting process |  | 1d? | 2020-09-11 | 2020-09-14 | 55 | 0d |  | PR/IR Dept | 8h |
| 57 | 4.3.3.5.5 | Posting & Distribution Process Confirmation Complete | milestone | 0d | 2020-09-14 | 2020-09-14 | 56 | 0d |  |  |  |
| 58 | 4.3.4 | Public and Investor Relation Message Development & Planning Complete | milestone | 0d | 2020-09-14 | 2020-09-14 | 57 | 0d |  |  |  |

| ID | WBS | Task | Type | Duration | Start | Finish | Predecessors | Total slack | Free slack | Resources | Work |
| --- | --- | --- | --- | --- | --- | --- | --- | --- | --- | --- | --- |
| 59 | 5 | **Perform Financial Closing Activities** |  | 22.5d? | 2020-08-24 | 2020-09-23 |  | 0d |  |  | 216h |
| 60 | 5.1 | **Define Financial Review Components and Related SEC Document Scheduling** |  | 5d? | 2020-08-24 | 2020-08-28 |  | 0d |  |  | 48h |
| 61 | 5.1.1 | Develop Financial Close Schedule |  | 1d | 2020-08-24 | 2020-08-24 | 23 | 0d |  | CFO/Controller | 8h |
| 62 | 5.1.2 | Develop and Confirm External Audit Review Schedule |  | 1d | 2020-08-25 | 2020-08-25 | 61 | 0d |  | CFO/Controller; External Auditors | 16h |
| 63 | 5.1.3 | Identify/Assign resources to develop and confirm Financial Statements and notes |  | 1d | 2020-08-26 | 2020-08-26 | 62 | 0d |  | CFO/Controller | 8h |
| 64 | 5.1.4 | Identify/Assign resources to develop and confirm 10-K Section |  | 1d? | 2020-08-27 | 2020-08-27 | 63 | 0d |  | CFO/Controller | 8h |
| 65 | 5.1.5 | Identify/Assign resources to develop and confirm Proxy Statement Section |  | 1d? | 2020-08-28 | 2020-08-28 | 64 | 0d |  | CFO/Controller | 8h |
| 66 | 5.1.6 | Financial Review and Related SEC document scheduling complete | milestone | 0d | 2020-08-28 | 2020-08-28 | 65 | 0d |  |  |  |
| 67 | 5.2 | **Perform Financial Close** |  | 3d? | 2020-08-31 | 2020-09-02 |  | 0d |  |  | 24h |
| 68 | 5.2.1 | Close out fiscal year books |  | 1d? | 2020-08-31 | 2020-08-31 | 66 | 0d |  | CFO/Controller | 8h |
| 69 | 5.2.2 | Perform review and approval of financial adjustments (Accruals and reserves) |  | 1d? | 2020-09-01 | 2020-09-01 | 68 | 0d |  | CFO/Controller | 8h |
| 70 | 5.2.3 | Develop financial results for inclusion in Annual Report, 10-K and Proxy Statement |  | 1d? | 2020-09-02 | 2020-09-02 | 69 | 0d |  | CFO/Controller | 8h |
| 71 | 5.2.4 | Financial Close and Results Complete | milestone | 0d | 2020-09-02 | 2020-09-02 | 70 | 0d |  |  |  |
| 72 | 5.3 | **Develop Financial Statement Notes and SEC Documents** |  | 3d? | 2020-09-03 | 2020-09-07 |  | 0d |  |  | 24h |
| 73 | 5.3.1 | Draft Notes to Financial Statements |  | 1d? | 2020-09-03 | 2020-09-03 | 71 | 0d |  | CFO/Controller | 8h |
| 74 | 5.3.2 | Draft 10-K |  | 1d? | 2020-09-04 | 2020-09-04 | 73 | 0d |  | CFO/Controller | 8h |
| 75 | 5.3.3 | Draft Proxy Statement information |  | 1d? | 2020-09-07 | 2020-09-07 | 74 | 0d |  | Legal Department | 8h |
| 76 | 5.3.4 | Financial Statement Notes and SEC document drafts Complete | milestone | 0d | 2020-09-07 | 2020-09-07 | 75 | 0d |  |  |  |
| 77 | 5.4 | **Perform External Audit** |  | 4d? | 2020-09-16 | 2020-09-21 |  | 5d | 0d |  | 56h |
| 78 | 5.4.1 | Conduct Foreign and Subsidiary Financial Audits |  | 1d? | 2020-09-16 | 2020-09-16 | 91 | 5d | 0d | External Auditors | 8h |
| 79 | 5.4.2 | Conduct Corporate Financial Audit |  | 1d? | 2020-09-17 | 2020-09-17 | 78 | 5d | 0d | External Auditors | 8h |
| 80 | 5.4.3 | External Audit Complete | milestone | 0d | 2020-09-17 | 2020-09-17 | 79 | 5d | 0d |  |  |
| 81 | 5.4.4 | Review and Finalize Audit Results with Audit Committee |  | 1d? | 2020-09-18 | 2020-09-18 | 80 | 5d | 0d | External Auditors; CFO/Controller; Audit Committee | 24h |
| 82 | 5.4.5 | Sign off on Financial Statements/Obtain Senior Management Certifications |  | 1d? | 2020-09-21 | 2020-09-21 | 81 | 5d | 0d | Audit Committee; CFO/Controller | 16h |
| 83 | 5.4.6 | External Audit Complete | milestone | 0d | 2020-09-21 | 2020-09-21 | 82 | 5d | 0d |  |  |

| ID | WBS | Task | Type | Duration | Start | Finish | Predecessors | Total slack | Free slack | Resources | Work |
| --- | --- | --- | --- | --- | --- | --- | --- | --- | --- | --- | --- |
| 84 | 5.5 | **Perform Internal Legal Review** |  | 6d? | 2020-09-08 | 2020-09-15 |  | 5d | 0d |  | 48h |
| 85 | 5.5.1 | Coordinate and review key significant events for inclusion in Annual Report |  | 1d? | 2020-09-08 | 2020-09-08 | 76 | 5d | 0d | Legal Department | 8h |
| 86 | 5.5.2 | Coordinate and review key significant events for inclusion in 10-K |  | 1d? | 2020-09-09 | 2020-09-09 | 85 | 5d | 0d | Legal Department | 8h |
| 87 | 5.5.3 | Coordinate/develop Proxy Statement development |  | 1d? | 2020-09-10 | 2020-09-10 | 86 | 5d | 0d | Legal Department | 8h |
| 88 | 5.5.4 | Coordinate/review Message to the Shareholders |  | 1d? | 2020-09-11 | 2020-09-11 | 87 | 5d | 0d | Legal Department | 8h |
| 89 | 5.5.5 | Coordinate/review External Audit review and comments |  | 1d? | 2020-09-14 | 2020-09-14 | 88 | 5d | 0d | Legal Department | 8h |
| 90 | 5.5.6 | Coordinate/review Senior Management certifications |  | 1d? | 2020-09-15 | 2020-09-15 | 89 | 5d | 0d | Legal Department | 8h |
| 91 | 5.5.7 | Internal Legal Review Complete | milestone | 0d | 2020-09-15 | 2020-09-15 | 90 | 5d | 0d |  |  |
| 92 | 5.6 | Publicly release financial results |  | 0.5d? | 2020-09-22 | 2020-09-22 | 46, 83 | 5d | 0d | Audit Committee; CFO/Controller; Chairman; PR/IR Dept | 16h |
| 93 | 5.7 | Financial Close complete |  | 1d? | 2020-09-22 | 2020-09-23 | 92 | 5d | 0d |  |  |
| 94 | 6 | **Produce Annual Report** |  | 8d? | 2020-09-14 | 2020-09-24 |  | 0d |  |  | 64h |
| 95 | 6.1 | Draft Annual Report Design Layout and Identify Placeholders |  | 1d? | 2020-09-14 | 2020-09-15 | 58 | 0d |  | PR/IR Dept | 8h |
| 96 | 6.2 | Prepare mockups for Executive Management |  | 1d? | 2020-09-15 | 2020-09-16 | 95 | 0d |  | PR/IR Dept | 8h |
| 97 | 6.3 | Iterate design/finalize production schedule |  | 1d? | 2020-09-16 | 2020-09-17 | 96 | 0d |  | PR/IR Dept | 8h |
| 98 | 6.4 | Finalize Annual Report Design and Placeholder data |  | 1d? | 2020-09-17 | 2020-09-18 | 97 | 0d |  | PR/IR Dept | 8h |
| 99 | 6.5 | Produce Final Layout/Obtain Final Approval |  | 1d? | 2020-09-18 | 2020-09-21 | 98 | 0d |  | PR/IR Dept | 8h |
| 100 | 6.6 | Print Annual Report |  | 1d? | 2020-09-21 | 2020-09-22 | 99 | 0d |  | PR/IR Dept | 8h |
| 101 | 6.7 | Obtain 10-K document file |  | 1d? | 2020-09-22 | 2020-09-23 | 100 | 0d |  | PR/IR Dept | 8h |
| 102 | 6.8 | Obtain Proxy Statement document file |  | 1d? | 2020-09-23 | 2020-09-24 | 101 | 0d |  | PR/IR Dept | 8h |
| 103 | 6.9 | Production of Annual Report Complete | milestone | 0d | 2020-09-24 | 2020-09-24 | 102 | 0d |  |  |  |
| 104 | 7 | **Distribute Annual Report** |  | 4d? | 2020-09-24 | 2020-09-30 |  | 0d |  |  | 32h |
| 105 | 7.1 | Obtain final mailing distribution lists |  | 1d? | 2020-09-24 | 2020-09-25 | 103 | 0d |  | PR/IR Dept | 8h |
| 106 | 7.2 | Print 10-K's for Annual Report mailings |  | 1d? | 2020-09-25 | 2020-09-28 | 105 | 0d |  | PR/IR Dept | 8h |
| 107 | 7.3 | Print Proxy Statements for Annual Report mailings |  | 1d? | 2020-09-28 | 2020-09-29 | 106 | 0d |  | PR/IR Dept | 8h |
| 108 | 7.4 | Consolidate and mail Annual Reports |  | 1d? | 2020-09-29 | 2020-09-30 | 107 | 0d |  | PR/IR Dept | 8h |
| 109 | 7.5 | Distribution Complete | milestone | 0d | 2020-09-30 | 2020-09-30 | 108 | 0d |  |  |  |
| 110 | 8 | Annual Report Complete | milestone | 0d | 2020-09-30 | 2020-09-30 | 109 | 0d |  |  |  |
