# Market Research Schedule

Schedule from MS Project, 2020-08-03 to 2020-11-20.

## Calendars

- Standard: Mon-Fri 08:00-12:00, 13:00-17:00; Sat-Sun off.

## Schedule

| ID | WBS | Task | Type | Duration | Start | Finish | Predecessors | Total slack | Free slack |
| --- | --- | --- | --- | --- | --- | --- | --- | --- | --- |
| 1 | 1 | **Initiation Phase** |  | 13d | 2020-08-03 | 2020-08-19 |  | 0d |  |
| 2 | 1.1 | **Requirements Gathering & Analysis** |  | 4d | 2020-08-03 | 2020-08-06 |  | 0d |  |
| 3 | 1.1.1 | Define process for gathering requirements |  | 1d | 2020-08-03 | 2020-08-03 |  | 0d |  |
| 4 | 1.1.2 | Document project-stakeholder interviews |  | 1d | 2020-08-04 | 2020-08-04 | 3 | 0d |  |
| 5 | 1.1.3 | Analyze requirements |  | 1d | 2020-08-05 | 2020-08-05 | 4 | 0d |  |
| 6 | 1.1.4 | Create requirements document |  | 1d | 2020-08-06 | 2020-08-06 | 5 | 75.5d | 0d |
| 7 | 1.2 | **Project Charter Development** |  | 10d | 2020-08-06 | 2020-08-19 |  | 0d |  |
| 8 | 1.2.1 | **Business Case** |  | 2d | 2020-08-06 | 2020-08-07 |  | 0d |  |
| 9 | 1.2.1.1 | Document summary of business purpose justification |  | 2d | 2020-08-06 | 2020-08-07 | 5 | 74.5d | 0d |
| 10 | 1.2.1.2 | Define expected benefits |  | 2d | 2020-08-06 | 2020-08-07 | 5 | 0d |  |
| 11 | 1.2.2 | **Project Scope Definition (High Level)** |  | 5d | 2020-08-10 | 2020-08-14 |  | 0d |  |
| 12 | 1.2.2.1 | Define primary market research objectives |  | 3d | 2020-08-10 | 2020-08-12 | 10 | 0d |  |
| 13 | 1.2.2.2 | Define primary market research deliverables |  | 2d | 2020-08-13 | 2020-08-14 | 12 | 69.5d | 0d |
| 14 | 1.2.2.3 | Identify specific exclusions to scope |  | 2d | 2020-08-13 | 2020-08-14 | 12 | 0d |  |
| 15 | 1.2.3 | Establish high-level time, cost, and resource estimates |  | 2d | 2020-08-17 | 2020-08-18 | 14 | 67.5d | 0d |
| 16 | 1.2.4 | Establish list of key stakeholders |  | 2d | 2020-08-17 | 2020-08-18 | 14 | 0d |  |
| 17 | 1.2.5 | Document project charter |  | 1d | 2020-08-19 | 2020-08-19 | 16 | 0d |  |
| 18 | 1.2.6 | Project Charter Approval | milestone | 0d | 2020-08-19 | 2020-08-19 | 17 | 0d |  |
| 19 | 1.3 | Initiation Phase Approval | milestone | 0d | 2020-08-19 | 2020-08-19 | 18 | 0d |  |
| 21 | 2 | **Planning Phase** |  | 32.5d | 2020-08-20 | 2020-10-05 |  | 0d |  |
| 22 | 2.1 | **Project Plan Development** |  | 32.5d | 2020-08-20 | 2020-10-05 | 19 | 0d |  |
| 23 | 2.1.1 | **Scope Statement** |  | 4d | 2020-08-20 | 2020-08-25 |  | 0d |  |
| 24 | 2.1.1.1 | Create scope description (based on business objectives) |  | 2d | 2020-08-20 | 2020-08-21 | 19 | 22.5d | 0d |
| 25 | 2.1.1.2 | Define scope boundaries (both in and out of scope) |  | 2d | 2020-08-20 | 2020-08-21 | 19 | 0d |  |
| 26 | 2.1.1.3 | Define key project deliverables (including user-acceptable criteria) |  | 2d | 2020-08-24 | 2020-08-25 | 25 | 0d |  |

| ID | WBS | Task | Duration | Start | Finish | Predecessors | Total slack | Free slack |
| --- | --- | --- | --- | --- | --- | --- | --- | --- |
| 27 | 2.1.2 | **Work Breakdown Structure (WBS)** | 4d | 2020-08-26 | 2020-08-31 |  | 0d |  |
| 28 | 2.1.2.1 | Create WBS to work-level execution | 2d | 2020-08-26 | 2020-08-27 | 26 | 0d |  |
| 29 | 2.1.2.2 | Define task dependencies (including predecessors/successors) | 2d | 2020-08-28 | 2020-08-31 | 28 | 0d |  |
| 30 | 2.1.3 | **Performance Baseline Measurement** | 2d | 2020-09-01 | 2020-09-02 |  | 0d |  |
| 31 | 2.1.3.1 | Create schedule baseline (with expected resource effort) | 1d | 2020-09-01 | 2020-09-01 | 29 | 0d |  |
| 32 | 2.1.3.2 | Define budget baseline (with schedule and cost assumptions) | 1d | 2020-09-02 | 2020-09-02 | 31 | 56.5d | 0d |
| 33 | 2.1.3.3 | Establish baseline tolerance thresholds (trigger change control) | 1d | 2020-09-02 | 2020-09-02 | 31 | 0d |  |
| 34 | 2.1.4 | **Procurement Planning (Research Vendor Selection)** | 8d | 2020-08-26 | 2020-09-04 |  | 20.5d | 0d |
| 35 | 2.1.4.1 | Analyze market conditions | 1d | 2020-08-26 | 2020-08-26 | 23 | 20.5d | 0d |
| 36 | 2.1.4.2 | Analyze make-or-buy findings | 2d | 2020-08-27 | 2020-08-28 | 35 | 20.5d | 0d |
| 37 | 2.1.4.3 | Select contract type | 1d | 2020-08-31 | 2020-08-31 | 36 | 20.5d | 0d |
| 38 | 2.1.4.4 | Develop procurement management plan | 2d | 2020-09-01 | 2020-09-02 | 37 | 20.5d | 0d |
| 39 | 2.1.4.5 | Develop statement of work | 2d | 2020-09-03 | 2020-09-04 | 38 | 20.5d | 0d |
| 40 | 2.1.5 | **Project Schedule Plan** | 2.5d | 2020-09-03 | 2020-09-07 |  | 0d |  |
| 41 | 2.1.5.1 | **Project Milestones (PMs)** | 0.5d | 2020-09-03 | 2020-09-03 |  | 0d |  |
| 42 | 2.1.5.1.1 | Define major milestones (alignment with deliverables) | 0.5d | 2020-09-03 | 2020-09-03 | 33 | 0d |  |
| 43 | 2.1.5.2 | **Project Scheduling Work Plan** | 2d | 2020-09-03 | 2020-09-07 |  | 0d |  |
| 44 | 2.1.5.2.1 | Define standard PM and approval gates | 0.5d | 2020-09-03 | 2020-09-03 | 42 | 55.5d | 0d |
| 45 | 2.1.5.2.2 | Document WBS, milestones, and deliverables (dates and resourcing) | 2d | 2020-09-03 | 2020-09-07 | 42 | 54d | 0d |
| 46 | 2.1.5.2.3 | Document schedule baseline | 1d | 2020-09-03 | 2020-09-04 | 42 | 0d |  |
| 47 | 2.1.6 | **Resource Management** | 2d | 2020-09-04 | 2020-09-08 |  | 0d |  |
| 48 | 2.1.6.1 | Name project team members (with roles and responsibilities) | 2d | 2020-09-04 | 2020-09-08 | 46 | 53d | 0d |
| 49 | 2.1.6.2 | Define all project stakeholders (with roles and project team liaison) | 2d | 2020-09-04 | 2020-09-08 | 46 | 53d | 0d |
| 50 | 2.1.6.3 | Create org chart: project team, sponsor, steering committee, stakeholders | 2d | 2020-09-04 | 2020-09-08 | 46 | 0d |  |

| ID | WBS | Task | Type | Duration | Start | Finish | Predecessors | Total slack | Free slack |
| --- | --- | --- | --- | --- | --- | --- | --- | --- | --- |
| 51 | 2.1.7 | **Supporting PM Process Plans** |  | 19d | 2020-09-08 | 2020-10-05 |  | 0d |  |
| 52 | 2.1.7.1 | **Change Management** |  | 4d | 2020-09-08 | 2020-09-14 |  | 0d |  |
| 53 | 2.1.7.1.1 | Document change control procedure for budget and schedule baselines |  | 2d | 2020-09-08 | 2020-09-10 | 50 | 51d | 0d |
| 54 | 2.1.7.1.2 | Document change control for approved scope baseline |  | 2d | 2020-09-08 | 2020-09-10 | 50 | 0d |  |
| 55 | 2.1.7.1.3 | Document change control for systems modifications |  | 2d | 2020-09-10 | 2020-09-14 | 54 | 0d |  |
| 56 | 2.1.7.2 | **Risk Management** |  | 4d | 2020-09-14 | 2020-09-18 |  | 0d |  |
| 57 | 2.1.7.2.1 | Document risk process: prioritization, mitigation, and contingency guidelines |  | 2d | 2020-09-14 | 2020-09-16 | 55 | 0d |  |
| 58 | 2.1.7.2.2 | Document risk assessment for scope, budget, and schedule baselines |  | 2d | 2020-09-16 | 2020-09-18 | 57 | 0d |  |
| 59 | 2.1.7.3 | **Issues Management** |  | 2d | 2020-09-18 | 2020-09-22 |  | 0d |  |
| 60 | 2.1.7.3.1 | Document issues process: prioritization, resolution, and tracking guidelines |  | 2d | 2020-09-18 | 2020-09-22 | 58 | 43d | 0d |
| 61 | 2.1.7.3.2 | Document formal 3-tiered escalation: project manager, sponsor, and executives |  | 2d | 2020-09-18 | 2020-09-22 | 58 | 0d |  |
| 62 | 2.1.7.4 | **Communication Plan** |  | 4d | 2020-09-22 | 2020-09-28 |  | 0d |  |
| 63 | 2.1.7.4.1 | Document guidelines: project updates and stakeholder collaboration |  | 2d | 2020-09-22 | 2020-09-24 | 61 | 0d |  |
| 64 | 2.1.7.4.2 | Document guidelines for document repository access and controls |  | 2d | 2020-09-22 | 2020-09-24 | 61 | 41d | 0d |
| 65 | 2.1.7.4.3 | Document standard project team and executive status report guidelines |  | 2d | 2020-09-24 | 2020-09-28 | 63 | 0d |  |
| 66 | 2.1.7.5 | **Quality Assurance and Control Plan** |  | 2d | 2020-09-28 | 2020-09-30 |  | 0d |  |
| 67 | 2.1.7.5.1 | Define criteria for user-acceptance testing (with checklist) |  | 2d | 2020-09-28 | 2020-09-30 | 65 | 37d | 0d |
| 68 | 2.1.7.5.2 | Define criteria for cost/benefit analysis |  | 2d | 2020-09-28 | 2020-09-30 | 65 | 37d | 0d |
| 69 | 2.1.7.5.3 | Define criteria and process for periodic stakeholder satisfaction survey |  | 2d | 2020-09-28 | 2020-09-30 | 65 | 37d | 0d |
| 70 | 2.1.7.5.4 | "Define criteria for ""Lessons Learned"" (during closeout)" |  | 2d | 2020-09-28 | 2020-09-30 | 65 | 0d |  |
| 71 | 2.1.7.6 | Create Draft Project Plan |  | 3d | 2020-09-30 | 2020-10-05 | 70 | 0d |  |
| 72 | 2.1.8 | Project Plan Approval | milestone | 0d | 2020-10-05 | 2020-10-05 | 71 | 0d |  |
| 73 | 2.2 | Planning Phase Approval | milestone, manual | 0d | 2020-10-05 | 2020-10-05 | 72 |  |  |
| 75 | 3 | **Execution Phase** |  | 31d | 2020-10-05 | 2020-11-17 |  | 0d |  |
| 76 | 3.1 | **Brainstorming Marketing Idea** |  | 31d | 2020-10-05 | 2020-11-17 |  | 0d |  |
| 77 | 3.1.1 | **Prep Work** |  | 3.25d | 2020-10-05 | 2020-10-08 |  | 3.75d | 0d |
| 78 | 3.1.1.1 | Define objectives |  | 1d | 2020-10-05 | 2020-10-06 | 73 | 3.75d | 0d |
| 79 | 3.1.1.2 | Identify brainstorming team |  | 0.5d | 2020-10-06 | 2020-10-06 | 78 | 3.75d | 0d |
| 80 | 3.1.1.3 | Identify location |  | 0.25d | 2020-10-07 | 2020-10-07 | 79 | 3.75d | 0d |
| 81 | 3.1.1.4 | Develop agenda |  | 1d | 2020-10-07 | 2020-10-08 | 80 | 3.75d | 0d |
| 82 | 3.1.1.5 | Schedule facility |  | 0.25d | 2020-10-08 | 2020-10-08 | 81 | 3.75d | 0d |
| 83 | 3.1.1.6 | Arrange facilitator |  | 0.25d | 2020-10-08 | 2020-10-08 | 82 | 3.75d | 0d |

| ID | WBS | Task | Type | Duration | Start | Finish | Predecessors | Total slack | Free slack |
| --- | --- | --- | --- | --- | --- | --- | --- | --- | --- |
| 84 | 3.1.2 | **Brainstorming Session** |  | 5d | 2020-10-15 | 2020-10-22 |  | 3.75d | 0d |
| 85 | 3.1.2.1 | Analyze market condition |  | 0.5d | 2020-10-15 | 2020-10-16 | 83FS+5d | 3.75d | 0d |
| 86 | 3.1.2.2 | Identify risks |  | 1d | 2020-10-16 | 2020-10-19 | 85 | 3.75d | 0d |
| 87 | 3.1.2.3 | Select primary market research tool |  | 0.5d | 2020-10-19 | 2020-10-19 | 86 | 3.75d | 0d |
| 88 | 3.1.2.4 | Gather ideas |  | 1d | 2020-10-19 | 2020-10-20 | 87 | 3.75d | 0d |
| 89 | 3.1.2.5 | Analyze ideas |  | 0.5d | 2020-10-20 | 2020-10-21 | 88 | 3.75d | 0d |
| 90 | 3.1.2.6 | Develop research brief |  | 1d | 2020-10-21 | 2020-10-22 | 89 | 3.75d | 0d |
| 91 | 3.1.2.7 | Present to management |  | 0.5d | 2020-10-22 | 2020-10-22 | 90 | 3.75d | 0d |
| 92 | 3.1.3 | **Solicitation** |  | 12d | 2020-10-05 | 2020-10-21 |  | 0d |  |
| 93 | 3.1.3.1 | Define evaluation criteria |  | 1d | 2020-10-05 | 2020-10-06 | 39, 73 | 0d |  |
| 94 | 3.1.3.2 | Advertise Scope of Work (SOW) |  | 1d | 2020-10-06 | 2020-10-07 | 93 | 0d |  |
| 95 | 3.1.3.3 | Collect Proposals | milestone | 0d | 2020-10-21 | 2020-10-21 | 94FS+10d | 0d |  |
| 96 | 3.1.4 | **Source Selection (Research Vendor Selection)** |  | 5d | 2020-10-21 | 2020-10-28 |  | 0d |  |
| 97 | 3.1.4.1 | Evaluate proposals |  | 2d | 2020-10-21 | 2020-10-23 | 95 | 0d |  |
| 98 | 3.1.4.2 | Screen vendors |  | 2d | 2020-10-23 | 2020-10-27 | 97 | 0d |  |
| 99 | 3.1.4.3 | Negotiate contract |  | 1d | 2020-10-27 | 2020-10-28 | 98 | 0d |  |
| 100 | 3.1.4.4 | Select Vendor | milestone | 0d | 2020-10-28 | 2020-10-28 | 99 | 0d |  |
| 101 | 3.1.5 | **Primary Market Research Tool Development** |  | 14d | 2020-10-28 | 2020-11-17 |  | 0d |  |
| 102 | 3.1.5.1 | Identify method of survey (phone, in-person, Internet, magazines, etc.) |  | 1d | 2020-10-28 | 2020-10-29 | 100, 91 | 0d |  |
| 103 | 3.1.5.2 | Identify minimum number of samples |  | 0.5d | 2020-10-29 | 2020-10-29 | 102 | 0d |  |
| 104 | 3.1.5.3 | Identify test market |  | 1d | 2020-10-30 | 2020-10-30 | 103 | 0d |  |
| 105 | 3.1.5.4 | Identify demographics |  | 0.5d | 2020-11-02 | 2020-11-02 | 104 | 0d |  |
| 106 | 3.1.5.5 | Define questionnaire |  | 2d | 2020-11-02 | 2020-11-04 | 105 | 0d |  |
| 107 | 3.1.5.6 | Conduct research |  | 5d | 2020-11-04 | 2020-11-11 | 106 | 0d |  |
| 108 | 3.1.5.7 | Compile results |  | 2d | 2020-11-11 | 2020-11-13 | 107 | 0d |  |
| 109 | 3.1.5.8 | Generate report |  | 1d | 2020-11-13 | 2020-11-16 | 108 | 0d |  |
| 110 | 3.1.5.9 | Present report |  | 1d | 2020-11-16 | 2020-11-17 | 109 | 0d |  |
| 111 | 3.2 | Execution Phase Gateway Approval | milestone | 0d | 2020-11-17 | 2020-11-17 | 76 | 0d |  |

| ID | WBS | Task | Type | Duration | Start | Finish | Predecessors | Total slack | Free slack | Constraint |
| --- | --- | --- | --- | --- | --- | --- | --- | --- | --- | --- |
| 113 | 4 | **Closeout Phase** |  | 3.5d | 2020-11-17 | 2020-11-20 |  | 0d |  |  |
| 114 | 4.1 | Contract Closeout |  | 1d | 2020-11-17 | 2020-11-17 |  | 0d |  | must start on 2020-11-17 |
| 115 | 4.2 | "Launch project ""Lessons Learned"" review" |  | 2d | 2020-11-17 | 2020-11-19 | 111 | 0d |  |  |
| 116 | 4.3 | **Establish process for archiving project data** |  | 1d | 2020-11-17 | 2020-11-18 | 111 | 2d | 0d |  |
| 117 | 4.3.1 | Archive documents |  | 1d | 2020-11-17 | 2020-11-18 | 111 | 2d | 0d |  |
| 118 | 4.4 | Conduct administrative closeout |  | 1d | 2020-11-19 | 2020-11-20 | 111, 115 | 0d |  |  |
| 119 | 4.5 | Closeout Phase Approval | milestone | 0d | 2020-11-20 | 2020-11-20 | 118 | 0d |  |  |
