# Training Rollout Initiative and Plan

Schedule from MS Project, 2020-08-03 to 2021-03-09.

## Calendars

- Standard: Mon-Fri 08:00-12:00, 13:00-17:00; Sat-Sun off.

## Schedule

| ID | WBS | Task | Type | Duration | Start | Finish | Predecessors | Total slack | Free slack |
| --- | --- | --- | --- | --- | --- | --- | --- | --- | --- |
| 1 | 1 | **TRIP - Stage 1 - Project Planning** |  | 19d | 2020-08-03 | 2020-08-27 |  | 0d |  |
| 2 | 1.1 | Define project objectives and describe mission statement |  | 2d | 2020-08-03 | 2020-08-04 |  | 146.25d | 0d |
| 3 | 1.2 | Ensure total participation by training team support staff |  | 1d | 2020-08-03 | 2020-08-03 |  | 0d |  |
| 4 | 1.3 | **Identify Departments or End-User Community to be Trained** |  | 7d | 2020-08-04 | 2020-08-12 |  | 0d |  |
| 5 | 1.3.1 | Create list of target departments |  | 1d | 2020-08-05 | 2020-08-05 | 2 | 146.25d | 0d |
| 6 | 1.3.2 | Perform departmental training needs analysis |  | 7d | 2020-08-04 | 2020-08-12 | 3 | 0d |  |
| 7 | 1.3.3 | Compile results and present findings to training coordinator |  | 2d | 2020-08-07 | 2020-08-10 | 6FS-4d | 0d |  |
| 8 | 1.3.4 | Prioritize training delivery according to critical need |  | 2d | 2020-08-11 | 2020-08-12 | 7 | 0d |  |
| 9 | 1.3.5 | Inform department heads of the training initiative |  | 2d | 2020-08-06 | 2020-08-07 | 5 | 151.75d | 0d |
| 10 | 1.3.6 | Determine if training can be done in-house or outsourced |  | 1.5d | 2020-08-06 | 2020-08-07 | 5 | 146.25d | 0d |
| 11 | 1.4 | **Seek Input from Training Vendor** |  | 6d | 2020-08-07 | 2020-08-17 |  | 146.25d | 0d |
| 12 | 1.4.1 | Define vendor deliverables - can they meet our needs? |  | 1d | 2020-08-07 | 2020-08-10 | 10 | 146.25d | 0d |
| 13 | 1.4.2 | Obtain vendor commitment to training rollout schedule |  | 3d | 2020-08-10 | 2020-08-13 | 12 | 146.25d | 0d |
| 14 | 1.4.3 | Review and customize training material |  | 2d | 2020-08-13 | 2020-08-17 | 12, 13 | 146.25d | 0d |
| 15 | 1.4.4 | Obtain approval for purchase orders to cover vendor invoices |  | 2d | 2020-08-13 | 2020-08-17 | 13 | 146.25d | 0d |
| 16 | 1.5 | **Perform End-User Skill Assessment** |  | 11d | 2020-08-13 | 2020-08-27 |  | 0d |  |
| 17 | 1.5.1 | Create a list of training recipients by department |  | 2d | 2020-08-13 | 2020-08-14 | 8 | 0d |  |
| 18 | 1.5.2 | Send skill assessment forms to department heads |  | 2d | 2020-08-17 | 2020-08-18 | 17 | 0d |  |
| 19 | 1.5.3 | Collect and compile results by department |  | 5d | 2020-08-19 | 2020-08-25 | 18 | 0d |  |
| 20 | 1.5.4 | Initiate end-user placement matrix |  | 3d | 2020-08-24 | 2020-08-26 | 19FS-2d | 0d |  |
| 21 | 1.5.5 | Finalize project budget |  | 2d | 2020-08-26 | 2020-08-27 | 19 | 137.75d | 0d |
| 22 | 1.6 | Stage 1 - TRIP - End project initiation | milestone | 0d | 2020-08-27 | 2020-08-27 | 21 | 137.75d | 0d |
| 23 | 2 | **TRIP - Stage 2 - Project Commencement** |  | 14d | 2020-08-27 | 2020-09-15 |  | 0d |  |
| 24 | 2.1 | **Prepare Rollout Schedule and Create Awareness** |  | 12d | 2020-08-27 | 2020-09-11 |  | 0d |  |
| 25 | 2.1.1 | Determine course dates, start and end times, and locations |  | 3d | 2020-08-27 | 2020-08-31 | 20 | 0d |  |
| 26 | 2.1.2 | Post course outlines and schedule on corporate intranet |  | 1d | 2020-09-01 | 2020-09-02 | 25FS+0.5d | 129.25d | 0d |
| 27 | 2.1.3 | Establish support through help desk for post-training questions |  | 1d | 2020-09-01 | 2020-09-01 | 25 | 134.75d | 0d |
| 28 | 2.1.4 | Reserve training rooms |  | 1d | 2020-09-01 | 2020-09-01 | 25 | 134.75d | 0d |
| 29 | 2.1.5 | Coordinate with information technology team for optimal workstation and equipment performance |  | 1d | 2020-09-02 | 2020-09-03 | 26 | 133.25d | 0d |
| 30 | 2.1.6 | Order training manuals and necessary material |  | 7d | 2020-09-01 | 2020-09-09 | 25 | 128.75d | 0d |

Notes:
- 11: Can be skipped if instructors and training are done in-house.
- 16: Optimal results begin with assessments of professional skills that identify gaps, and their causes that prevent an organization from achieving its highest goals.
- 18: Department heads, in turn, request that their own staff complete and return the skill assessment forms.
- 20: Use the matrix to place each user in the proper training session....
- 23: Assumption:...

| ID | WBS | Task | Type | Duration | Start | Finish | Predecessors | Total slack | Free slack | Constraint |
| --- | --- | --- | --- | --- | --- | --- | --- | --- | --- | --- |
| 31 | 2.1.7 | **Marketing Strategy** |  | 9d | 2020-09-01 | 2020-09-11 |  | 0d |  |  |
| 32 | 2.1.7.1 | Order promotional material |  | 7d | 2020-09-01 | 2020-09-09 | 25 | 0d |  |  |
| 33 | 2.1.7.2 | Create posters and place them in high-traffic areas |  | 4d | 2020-09-08 | 2020-09-11 | 32FS-2d | 0d |  |  |
| 34 | 2.1.7.3 | E-mail invitation to participants |  | 1d | 2020-09-08 | 2020-09-08 | 33SS | 128.75d | 0d |  |
| 35 | 2.1.7.4 | Arrange for catering of meals and refreshments |  | 1d | 2020-09-09 | 2020-09-09 | 34 | 128.75d | 0d |  |
| 36 | 2.2 | **Training Sessions Registration** |  | 5d | 2020-09-08 | 2020-09-14 |  | 0d |  |  |
| 37 | 2.2.1 | Enroll users who registered via corporate intranet |  | 2d | 2020-09-08 | 2020-09-09 | 33SS | 0d |  |  |
| 38 | 2.2.2 | Send out confirmations to these registration |  | 1d | 2020-09-10 | 2020-09-10 | 37 | 2d | 0d |  |
| 39 | 2.2.3 | Send out prework requirements |  | 2d | 2020-09-08 | 2020-09-09 | 37SS | 3d | 0d |  |
| 40 | 2.2.4 | Monitor cancellations and late requests for training |  | 1d | 2020-09-14 | 2020-09-14 | 37FS+2d | 0d |  |  |
| 41 | 2.3 | **Schedule Instructors** |  | 3d | 2020-09-02 | 2020-09-07 |  | 131.25d | 0d |  |
| 42 | 2.3.1 | In-house instructors |  | 1d | 2020-09-02 | 2020-09-03 | 26 | 133.25d | 0d |  |
| 43 | 2.3.2 | Outsourced instructors |  | 3d | 2020-09-02 | 2020-09-07 | 26 | 131.25d | 0d |  |
| 44 | 2.4 | **Courseware Evaluations** |  | 3d | 2020-09-04 | 2020-09-09 |  | 129.25d | 0d |  |
| 45 | 2.4.1 | Reuse or build an end-user course evaluation form (online or paper) |  | 2d | 2020-09-04 | 2020-09-08 | 26FS+2d | 130.25d | 0d |  |
| 46 | 2.4.2 | Reuse or build an special feedback form for instructors |  | 2d | 2020-09-07 | 2020-09-09 | 26FS+3d | 129.25d | 0d |  |
| 47 | 2.5 | Stage 2 - TRIP - End project commencement | milestone | 0d | 2020-09-15 | 2020-09-15 | 36FS+1d | 0d |  |  |
| 48 | 3 | **TRIP - Stage 3 - Project Implementation and Control** |  | 12.75d | 2020-09-18 | 2020-10-06 |  | 0d |  |  |
| 49 | 3.1 | Conduct training and track attendance |  | 9.25d | 2020-09-18 | 2020-10-01 | 47FS+2d | 0d |  |  |
| 50 | 3.2 | **Daily Conference Call (Hold Daily Call to Address Issues)** |  | 9.25d | 2020-09-18 | 2020-10-01 |  | 113.5d | 0d |  |
| 51 | 3.2.1 | Call 1 |  | 1h | 2020-09-18 | 2020-09-18 | 49SS | 113.5d | 0d | start no earlier than 2020-03-09 |
| 52 | 3.2.2 | Call 2 |  | 1h | 2020-09-21 | 2020-09-21 | 51FS+1d | 113.5d | 0d | start no earlier than 2020-03-10 |
| 53 | 3.2.3 | Call 3 |  | 1h | 2020-09-22 | 2020-09-22 | 52FS+1d | 113.5d | 0d | start no earlier than 2020-03-11 |
| 54 | 3.2.4 | Call 4 |  | 1h | 2020-09-23 | 2020-09-23 | 53FS+1d | 113.5d | 0d | start no earlier than 2020-03-12 |
| 55 | 3.2.5 | Call 5 |  | 1h | 2020-09-24 | 2020-09-24 | 54FS+1d | 113.5d | 0d | start no earlier than 2020-03-13 |
| 56 | 3.2.6 | Call 6 |  | 1h | 2020-09-25 | 2020-09-25 | 55FS+1d | 113.5d | 0d | start no earlier than 2020-03-16 |
| 57 | 3.2.7 | Call 7 |  | 1h | 2020-09-28 | 2020-09-28 | 56FS+1d | 113.5d | 0d | start no earlier than 2020-03-17 |
| 58 | 3.2.8 | Call 8 |  | 1h | 2020-09-29 | 2020-09-29 | 57FS+1d | 113.5d | 0d | start no earlier than 2020-03-18 |
| 59 | 3.2.9 | Call 9 |  | 1h | 2020-09-30 | 2020-09-30 | 58 | 113.5d | 0d | start no earlier than 2020-03-19 |
| 60 | 3.2.10 | Call 10 |  | 1h | 2020-10-01 | 2020-10-01 | 59FS+1d | 113.5d | 0d | start no earlier than 2020-03-20 |
| 61 | 3.3 | Collect feedback and compile results |  | 2.5d | 2020-09-29 | 2020-10-01 | 49FS-2d | 0d |  |  |
| 62 | 3.4 | Determine need for make up training |  | 1.5d | 2020-10-01 | 2020-10-02 | 49 | 112d | 0d |  |
| 63 | 3.5 | Update department heads with training results |  | 2d | 2020-10-01 | 2020-10-05 | 61 | 0d |  |  |
| 64 | 3.6 | Issue certificates of completion to participants |  | 1d | 2020-10-05 | 2020-10-06 | 63 | 0d |  |  |
| 65 | 3.7 | Stage 3 - TRIP - End project implementation and control | milestone | 0d | 2020-10-06 | 2020-10-06 | 64 | 0d |  |  |

Notes:
- 32: Promotional material can include custom notepads, pens, mouse pads, etc.
- 37: Enrollment and confirmations can be fully automated if done through corporate intranet....
- 39: After skills assessments are collected, there may be a need to contact individual users and ask them to perform some prep work or prework prior to their participation in training. This is to ensure that such users have satisfied the necessary prerequisite
- 40: There may be a need for makeup sessions if a sufficient number of absent users require them....
- 46: This form is usually used to collect feedback from instructors on the quality of material, room setup, workstation performance, specific user issues, specific software issues and specific vendor issues (if applicable)....
- 48: Assumption:...
- 50: Conference call performed at the end of the training day. Right-click this task and click Task Information to adjust the various options.
- 51: Conference call performed at the end of the training day. Right-click this task and click Task Information to adjust the various options.
- 52: Conference call performed at the end of the training day. Right-click this task and click Task Information to adjust the various options.
- 53: Conference call performed at the end of the training day. Right-click this task and click Task Information to adjust the various options.
- 54: Conference call performed at the end of the training day. Right-click this task and click Task Information to adjust the various options.
- 55: Conference call performed at the end of the training day. Right-click this task and click Task Information to adjust the various options.
- 56: Conference call performed at the end of the training day. Right-click this task and click Task Information to adjust the various options.
- 57: Conference call performed at the end of the training day. Right-click this task and click Task Information to adjust the various options.
- 58: Conference call performed at the end of the training day. Right-click this task and click Task Information to adjust the various options.
- 59: Conference call performed at the end of the training day. Right-click this task and click Task Information to adjust the various options.
- 60: Conference call performed at the end of the training day. Right-click this task and click Task Information to adjust the various options.
- 61: Course evaluations can be fully automated so that users complete an online form at the end of each session; this makes compiling results much easier. However, allow more time if evaluations are completed via paper forms....
- 64: When the rollout is complete, certificates of completion are sent to department heads; they are in turn given out to the participants based on specific departmental procedures (such as updating employment records or send to regulatory agencies for require

| ID | WBS | Task | Type | Duration | Start | Finish | Predecessors | Total slack | Free slack |
| --- | --- | --- | --- | --- | --- | --- | --- | --- | --- |
| 66 | 4 | **TRIP - Stage 4 - Project Close Out and Conclusion** |  | 108d | 2020-10-08 | 2021-03-09 |  | 0d |  |
| 67 | 4.1 | **Performance measurement through post-training review of deliverables** |  | 8d | 2020-10-08 | 2020-10-20 |  | 0d |  |
| 68 | 4.1.1 | Discuss evaluations, results, and process improvements with training team support staff |  | 1d | 2020-10-08 | 2020-10-09 | 65FS+2d | 0d |  |
| 69 | 4.1.2 | Create a list of best practices and FAQ for future training endeavors |  | 3d | 2020-10-09 | 2020-10-14 | 68 | 0d |  |
| 70 | 4.1.3 | Discuss results with vendor for any improvements |  | 2d | 2020-10-14 | 2020-10-16 | 68, 69 | 0d |  |
| 71 | 4.1.4 | Identify issues that were problems and improve them |  | 2d | 2020-10-16 | 2020-10-20 | 68, 69, 70 | 0d |  |
| 72 | 4.2 | **Conduct Return On Investment (ROI) Research** |  | 10d | 2021-02-23 | 2021-03-09 |  | 0d |  |
| 73 | 4.2.1 | Send ROI forms to participants and department heads |  | 2d | 2021-02-23 | 2021-02-25 | 67FS+90d | 0d |  |
| 74 | 4.2.2 | Measure ROI according to established parameters |  | 5d | 2021-02-24 | 2021-03-03 | 73FS-1d | 0d |  |
| 75 | 4.2.3 | Compile results and present findings to department heads and HR and training managers |  | 4d | 2021-03-03 | 2021-03-09 | 74 | 0d |  |
| 76 | 4.3 | Stage 4 - TRIP - End project close out and conclusion | milestone | 0d | 2021-03-09 | 2021-03-09 | 75 | 0d |  |
| 77 | 5 | Party!! For training team support staff (and vendor staff) |  | 1d | 2020-10-06 | 2020-10-07 | 65 | 109d | 0d |

Notes:
- 72: Typically done three months after the completion of the training rollout.
- 73: The goal is to determine if they are using and applying what they learned. A standard training ROI form is used....
