# sample

Schedule from MS Project, 2015-11-02 to 2016-05-27, costs in $, A marks actual dates.

## Calendars

- Standard: Mon-Fri 08:00-12:00, 13:00-17:00; Sat-Sun off. Exceptions (off unless hours are given): 2015-12-24 to 2015-12-27 (Christmas), 2016-01-01 to 2016-01-02 (New year).

## Resources

| Resource | Unit | Rate |
| --- | --- | --- |
| G.C. General Management |  | 80 |
| G.C. Project Management |  | 70 |
| Steel Erection Contractor Management |  | 60 |
| Roofing Contractor Management |  | 70 |
| Elevator Contractor Management |  | 60 |
| Plumbing Contractor Management |  | 60 |
| Electric Contractor Management |  | 70 |
| HVAC Contractor Management |  | 60 |
| Electric Contractor |  | 60 |
| Plumbing Contractor |  | 60 |
| G.C. Survey Crew |  | 50 |
| Site Grading Contractor |  | 60 |
| G.C. Rough Carpenter Crew |  | 50 |
| G.C. Concrete Crew |  | 50 |
| G.C. Labor Crew |  | 50 |
| Elevator Contractor |  | 60 |
| G.C. Finish Carpenter Crew |  | 50 |
| HVAC Contractor |  | 60 |
| Drywall Contractor |  | 60 |
| Painting Contractor |  | 70 |
| Carpet Contractor |  | 60 |
| Landscape Contractor |  | 60 |
| Tile Contractor |  | 60 |
| G.C. Superintendent |  | 60 |
| G.C Scheduler |  | 60 |
| G.C Procurement |  | 60 |
| Steel Erection Contractor |  | 60 |
| Paving Contractor |  | 60 |
| G.C Accounting |  | 60 |
| Concrete | ton | 30 |
| Painting Material | Liter | 15 |

## Schedule

| ID | WBS | Task | Type | Duration | Start | Finish | Predecessors | Complete | Remaining | Baseline start | Baseline finish | Baseline duration | Total slack | Free slack | Constraint | Resources | Work | Actual work | Cost | Baseline cost | Actual cost |
| --- | --- | --- | --- | --- | --- | --- | --- | --- | --- | --- | --- | --- | --- | --- | --- | --- | --- | --- | --- | --- | --- |
| 1 | 1 | **Three-story Office Building (76,000 square feet)** |  | 147d? | 2015-11-02 A | 2016-05-27 |  | 5% | 138.96d? | 2015-11-02 | 2016-05-27 | 147d | 0d |  |  |  | 3713.12h | 207.2h | 223,809.4 | 223,809.4 | 12,912 |
| 2 | 1.1 | **General Conditions** |  | 17d | 2015-11-02 A | 2015-11-24 |  | 15% | 14.42d | 2015-11-02 | 2015-11-24 | 17d | 0d |  |  |  | 193.6h | 30h | 13,128 | 13,128 | 2,292 |
| 3 | 1.1.1 | Receive notice to proceed and sign contract |  | 3d | 2015-11-02 A | 2015-11-04 A |  | 100% |  | 2015-11-02 | 2015-11-04 | 3d |  |  |  | G.C. General Management | 24h | 24h | 1,920 | 1,920 | 1,920 |
| 4 | 1.1.2 | Submit bond and insurance documents |  | 2d | 2015-11-05 | 2015-11-06 | 3 |  |  | 2015-11-05 | 2015-11-06 | 2d | 0.6d | 0d |  | G.C. Project Management; G.C. General Management [25%] | 20h |  | 1,440 | 1,440 |  |
| 5 | 1.1.3 | Prepare and submit project schedule |  | 2d | 2015-11-09 A | 2015-11-10 | 4 | 30% | 1.4d | 2015-11-09 | 2015-11-10 | 2d | 0d |  |  | G.C. Project Management [25%]; G.C Scheduler | 20h | 6h | 1,240 | 1,240 | 372 |
| 6 | 1.1.4 | Prepare and submit schedule of values |  | 2d | 2015-11-11 | 2015-11-12 | 5 |  |  | 2015-11-11 | 2015-11-12 | 2d | 138d | 0d |  | G.C. General Management [10%]; G.C. Project Management | 17.6h |  | 1,248 | 1,248 |  |
| 7 | 1.1.5 | Obtain building permits |  | 4d | 2015-11-05 | 2015-11-10 | 3 |  |  | 2015-11-05 | 2015-11-10 | 4d | 75d | 0d |  | G.C. Project Management [50%]; G.C Procurement [50%] | 32h |  | 2,080 | 2,080 |  |
| 8 | 1.1.6 | Submit preliminary shop drawings |  | 2w | 2015-11-11 | 2015-11-24 | 7 |  |  | 2015-11-11 | 2015-11-24 | 2w | 75d | 0d |  | G.C. Project Management [50%]; G.C Procurement [50%] | 80h |  | 5,200 | 5,200 |  |
| 9 | 1.1.7 | Submit monthly requests for payment |  | 6h | 2015-11-05 | 2015-11-05 | 3 |  |  | 2015-11-05 | 2015-11-05 | 6h | 123.25d | 0d |  |  |  |  |  |  |  |
| 10 | 1.1.8 | Final General Condition | milestone | 0d | 2015-11-05 | 2015-11-05 | 9 |  |  | 2015-11-05 | 2015-11-05 | 0d | 143.25d | 0d |  |  |  |  |  |  |  |
| 11 | 1.2 | **Long Lead Procurement** |  | 30d | 2015-11-02 A | 2015-12-11 |  | 6% | 28.12d | 2015-11-02 | 2015-12-11 | 30d | 0d |  |  |  | 640h | 40h | 40,000 | 40,000 | 2,400 |
| 12 | 1.2.1 | Submit shop drawings and order long lead items - steel |  | 2w | 2015-11-02 A | 2015-11-13 | 9FF | 50% | 1w | 2015-11-02 | 2015-11-13 | 2w | 0d |  |  | Steel Erection Contractor Management | 80h | 40h | 4,800 | 4,800 | 2,400 |
| 13 | 1.2.2 | Submit shop drawings and order long lead items - roofing |  | 2w | 2015-11-25 | 2015-12-08 | 8 |  |  | 2015-11-25 | 2015-12-08 | 2w | 120d | 0d |  | Roofing Contractor Management | 80h |  | 5,600 | 5,600 |  |
| 14 | 1.2.3 | Submit shop drawings and order long lead items - elevator |  | 2w | 2015-11-25 | 2015-12-08 | 8 |  |  | 2015-11-25 | 2015-12-08 | 2w | 120d | 0d |  | Elevator Contractor Management | 80h |  | 4,800 | 4,800 |  |
| 15 | 1.2.4 | Submit shop drawings and order long lead items - plumbing |  | 2w | 2015-11-25 | 2015-12-08 | 8 |  |  | 2015-11-25 | 2015-12-08 | 2w | 120d | 0d |  | Plumbing Contractor Management | 80h |  | 4,800 | 4,800 |  |
| 16 | 1.2.5 | Submit shop drawings and order long lead items - electric |  | 2w | 2015-11-25 | 2015-12-08 | 8 |  |  | 2015-11-25 | 2015-12-08 | 2w | 120d | 0d |  | Electric Contractor Management | 80h |  | 5,600 | 5,600 |  |
| 17 | 1.2.6 | Submit shop drawings and order long lead items - HVAC |  | 2w | 2015-11-25 | 2015-12-08 | 8 |  |  | 2015-11-25 | 2015-12-08 | 2w | 75d | 0d |  | HVAC Contractor Management | 80h |  | 4,800 | 4,800 |  |
| 18 | 1.2.7 | Detail, fabricate and deliver steel |  | 4w | 2015-11-16 | 2015-12-11 | 12 |  |  | 2015-11-16 | 2015-12-11 | 4w | 117d | 0d |  | Steel Erection Contractor Management [50%]; Steel Erection Contractor [50%] | 160h |  | 9,600 | 9,600 |  |
| 19 | 1.2.8 | Long Lead Procurement check all items | milestone | 0d | 2015-12-11 | 2015-12-11 | 18 |  |  | 2015-12-11 | 2015-12-11 | 0d | 117d | 0d |  |  |  |  |  |  |  |
| 20 | 1.3 | **Team meeting and discussion with partners** |  | 20.25d | 2016-01-06 | 2016-02-03 |  |  |  | 2016-01-06 | 2016-02-03 | 20.25d | 82.75d | 0d |  |  | 48h |  | 3,160 | 3,160 |  |
| 21 | 1.3.1 | Team meeting and discussion with partners 1 |  | 2h | 2016-01-06 | 2016-01-06 |  |  |  | 2016-01-06 | 2016-01-06 | 2h | 102.75d | 0d | start no earlier than 2016-01-06 | Electric Contractor; Elevator Contractor; G.C. General Management; G.C. Project Management; HVAC Contractor Management; Plumbing Contractor Management; Roofing Contractor Management; Steel Erection Contractor Management | 16h |  | 1,040 | 1,040 |  |
| 22 | 1.3.2 | Team meeting and discussion with partners 2 |  | 2h | 2016-01-20 | 2016-01-20 |  |  |  | 2016-01-20 | 2016-01-20 | 2h | 92.75d | 0d | start no earlier than 2016-01-20 | Electric Contractor Management; Elevator Contractor Management; G.C. General Management; G.C. Project Management; HVAC Contractor Management; Plumbing Contractor Management; Roofing Contractor Management; Steel Erection Contractor Management | 16h |  | 1,060 | 1,060 |  |
| 23 | 1.3.3 | Team meeting and discussion with partners 3 |  | 2h | 2016-02-03 | 2016-02-03 |  |  |  | 2016-02-03 | 2016-02-03 | 2h | 82.75d | 0d | start no earlier than 2016-02-03 | Electric Contractor Management; Elevator Contractor Management; G.C. General Management; G.C. Project Management; HVAC Contractor Management; Plumbing Contractor Management; Roofing Contractor Management; Steel Erection Contractor Management | 16h |  | 1,060 | 1,060 |  |
| 24 | 1.4 | **Mobilize on Site** |  | 10.5d | 2015-11-05 A | 2015-11-19 |  | 48% | 5.46d | 2015-11-05 | 2015-11-19 | 10.5d | 0d |  |  |  | 104h | 49.2h | 5,960 | 5,960 | 2,940 |
| 25 | 1.4.1 | Install temporary power |  | 2.5d | 2015-11-05 A | 2015-11-09 A | 3 | 100% |  | 2015-11-05 | 2015-11-09 | 2.5d |  |  |  | Electric Contractor | 20h | 20h | 1,200 | 1,200 | 1,200 |
| 26 | 1.4.2 | Install temporary water service |  | 2d | 2015-11-05 A | 2015-11-06 A | 3 | 100% |  | 2015-11-05 | 2015-11-06 | 2d |  |  |  | Plumbing Contractor | 16h | 16h | 960 | 960 | 960 |
| 27 | 1.4.3 | Set up site office |  | 3d | 2015-11-09 A | 2015-11-12 | 25, 26 | 50% | 1.5d | 2015-11-09 | 2015-11-12 | 3d | 0d |  |  | G.C. Superintendent; G.C. Labor Crew [10%] | 26.4h | 13.2h | 1,560 | 1,560 | 780 |
| 28 | 1.4.4 | Set line and grade benchmarks |  | 3d | 2015-11-12 | 2015-11-17 | 27 |  |  | 2015-11-12 | 2015-11-17 | 3d | 0d |  |  | G.C. Survey Crew | 24h |  | 1,200 | 1,200 |  |
| 29 | 1.4.5 | Prepare site - lay down yard and temporary fencing |  | 2d | 2015-11-17 | 2015-11-19 | 28 |  |  | 2015-11-17 | 2015-11-19 | 2d | 0d |  |  | Site Grading Contractor; G.C. Labor Crew [10%] | 17.6h |  | 1,040 | 1,040 |  |
| 30 | 1.4.6 | Finish temporay utilities | milestone | 0d | 2015-11-19 | 2015-11-19 | 29 |  |  | 2015-11-19 | 2015-11-19 | 0d | 133.5d | 0d |  |  |  |  |  |  |  |

Notes:
- 3: task completed; some feedback may be useful
- 5: some advice may be needed

| ID | WBS | Task | Type | Duration | Start | Finish | Predecessors | Baseline start | Baseline finish | Baseline duration | Total slack | Free slack | Constraint | Resources | Work | Cost | Baseline cost |
| --- | --- | --- | --- | --- | --- | --- | --- | --- | --- | --- | --- | --- | --- | --- | --- | --- | --- |
| 31 | 1.5 | **Site Grading and Utilities** |  | 35d | 2015-11-19 | 2016-01-12 |  | 2015-11-19 | 2016-01-12 | 35d | 0d |  |  |  | 360h | 21,200 | 21,200 |
| 32 | 1.5.1 | Clear and grub site |  | 3d | 2015-11-19 | 2015-11-24 | 27, 29 | 2015-11-19 | 2015-11-24 | 3d | 0d |  |  | Site Grading Contractor | 24h | 1,440 | 1,440 |
| 33 | 1.5.2 | Stone site access and temporary parking area |  | 2d | 2015-11-24 | 2015-11-26 | 32, 29 | 2015-11-24 | 2015-11-26 | 2d | 0d |  |  | Site Grading Contractor | 16h | 960 | 960 |
| 34 | 1.5.3 | Rough grade site (cut and fill) |  | 1w | 2015-11-26 | 2015-12-03 | 33 | 2015-11-26 | 2015-12-03 | 1w | 0d |  |  | Site Grading Contractor | 40h | 2,400 | 2,400 |
| 35 | 1.5.4 | Install storm drainage |  | 2w | 2015-12-03 | 2015-12-17 | 34 | 2015-12-03 | 2015-12-17 | 2w | 9d | 0d |  | Site Grading Contractor | 80h | 4,800 | 4,800 |
| 36 | 1.5.5 | Install exterior fire line and building fire riser |  | 2w | 2015-12-03 | 2015-12-17 | 34 | 2015-12-03 | 2015-12-17 | 2w | 0d |  |  | Plumbing Contractor | 80h | 4,800 | 4,800 |
| 37 | 1.5.6 | Perform final site grading |  | 2w | 2015-12-17 | 2016-01-05 | 35FF+1d, 36 | 2015-12-17 | 2016-01-05 | 2w | 0d |  |  | Site Grading Contractor | 80h | 4,800 | 4,800 |
| 38 | 1.5.7 | Erect building batter boards and layout building |  | 1w | 2016-01-05 | 2016-01-12 | 37 | 2016-01-05 | 2016-01-12 | 1w | 0d |  |  | G.C. Survey Crew | 40h | 2,000 | 2,000 |
| 39 | 1.5.8 | Install Utilities check | milestone | 0d | 2016-01-12 | 2016-01-12 | 38 | 2016-01-12 | 2016-01-12 | 0d | 98.5d | 0d |  |  |  |  |  |
| 40 | 1.6 | **Foundations** |  | 34.5d? | 2016-01-05 | 2016-02-22 |  | 2016-01-05 | 2016-02-22 | 34.5d | 0d |  |  |  | 330.4h | 17,990 | 17,990 |
| 41 | 1.6.1 | Excavate foundations |  | 2w | 2016-01-11 | 2016-01-22 |  | 2016-01-11 | 2016-01-22 | 2w | 0d |  | must finish on 2016-01-22 | Site Grading Contractor [50%] | 40h | 2,400 | 2,400 |
| 42 | 1.6.2 | Excavate elevator pit |  | 2d | 2016-01-05 | 2016-01-07 | 38SS | 2016-01-05 | 2016-01-07 | 2d | 0d |  |  | Site Grading Contractor | 16h | 960 | 960 |
| 43 | 1.6.3 | Form column piers and spread foundations |  | 4d | 2016-01-25 | 2016-01-28 | 41 | 2016-01-25 | 2016-01-28 | 4d | 69d | 0d |  | G.C. Rough Carpenter Crew | 32h | 1,600 | 1,600 |
| 44 | 1.6.4 | Rough-in electric and plumbing in elevator |  | 4d | 2016-01-07 | 2016-01-13 | 42 | 2016-01-07 | 2016-01-13 | 4d | 0d |  |  | Plumbing Contractor; Electric Contractor | 64h | 3,840 | 3,840 |
| 45 | 1.6.5 | Form elevator pit walls |  | 4d | 2016-01-13 | 2016-01-19 | 44 | 2016-01-13 | 2016-01-19 | 4d | 0d |  |  | G.C. Rough Carpenter Crew | 32h | 1,600 | 1,600 |
| 46 | 1.6.6 | Set reinforcing and anchor bolts |  | 4d | 2016-01-29 | 2016-02-03 | 43 | 2016-01-29 | 2016-02-03 | 4d | 69d | 0d |  | G.C. Rough Carpenter Crew | 32h | 1,600 | 1,600 |
| 47 | 1.6.7 | Pour column piers and foundations |  | 5d | 2016-02-04 | 2016-02-10 | 46 | 2016-02-04 | 2016-02-10 | 5d | 69d | 0d |  | G.C. Concrete Crew | 40h | 2,000 | 2,000 |
| 48 | 1.6.8 | Pour concrete elevator walls |  | 1.5d | 2016-01-19 | 2016-01-20 | 45 | 2016-01-19 | 2016-01-20 | 1.5d | 0d |  |  | G.C. Concrete Crew; Concrete [1 ton] | 12h | 630 | 630 |
| 49 | 1.6.9 | Cure elevator wall concrete |  | 1d? | 2016-01-21 | 2016-01-21 | 48 | 2016-01-21 | 2016-01-21 | 1d | 0d |  |  | G.C. Labor Crew [10%] | 0.8h | 40 | 40 |
| 50 | 1.6.10 | Cure piers and foundations |  | 1w | 2016-02-11 | 2016-02-17 | 47 | 2016-02-11 | 2016-02-17 | 1w | 69d | 0d |  | G.C. Labor Crew [10%] | 4h | 200 | 200 |
| 51 | 1.6.11 | Strip wall forms |  | 2d | 2016-01-22 | 2016-01-25 | 49 | 2016-01-22 | 2016-01-25 | 2d | 0d |  |  | G.C. Labor Crew [10%] | 1.6h | 80 | 80 |
| 52 | 1.6.12 | Strip column piers and foundation forms |  | 3d | 2016-02-18 | 2016-02-22 | 50 | 2016-02-18 | 2016-02-22 | 3d | 69d | 0d |  | G.C. Labor Crew | 24h | 1,200 | 1,200 |
| 53 | 1.6.13 | Install pneumatic tube in elevator pit |  | 3d | 2016-01-26 | 2016-01-28 | 51 | 2016-01-26 | 2016-01-28 | 3d | 0d |  |  | Elevator Contractor | 24h | 1,440 | 1,440 |
| 54 | 1.6.14 | Prepare and pour concrete floor in elevator pit |  | 1d? | 2016-01-29 | 2016-01-29 | 53 | 2016-01-29 | 2016-01-29 | 1d | 0d |  |  | G.C. Concrete Crew | 8h | 400 | 400 |
| 55 | 1.6.15 | Foundation inspection | milestone | 0d | 2016-01-29 | 2016-01-29 | 54 | 2016-01-29 | 2016-01-29 | 0d | 0d |  |  |  |  |  |  |

| ID | WBS | Task | Type | Duration | Start | Finish | Predecessors | Complete | Remaining | Baseline start | Baseline finish | Baseline duration | Total slack | Free slack | Resources | Work | Actual work | Cost | Baseline cost | Actual cost |
| --- | --- | --- | --- | --- | --- | --- | --- | --- | --- | --- | --- | --- | --- | --- | --- | --- | --- | --- | --- | --- |
| 56 | 1.7 | **Building Finishes** |  | 85d | 2016-02-01 | 2016-05-27 |  |  |  | 2016-02-01 | 2016-05-27 | 85d | 0d |  |  | 1200h |  | 72,015 | 72,015 |  |
| 57 | 1.7.1 | Install millwork and wood trim |  | 3w | 2016-02-01 | 2016-02-19 | 55SS |  |  | 2016-02-01 | 2016-02-19 | 3w | 0d |  | G.C. Finish Carpenter Crew | 120h |  | 6,000 | 6,000 |  |
| 58 | 1.7.2 | Paint walls and woodwork |  | 1mo | 2016-02-22 | 2016-03-18 | 57 |  |  | 2016-02-22 | 2016-03-18 | 1mo | 0d |  | Painting Contractor; Painting Material [1 Liter] | 160h |  | 11,215 | 11,215 |  |
| 59 | 1.7.3 | Install conduit at ceiling plenum space |  | 3w | 2016-03-21 | 2016-04-08 | 58 |  |  | 2016-03-21 | 2016-04-08 | 3w | 0d |  | Electric Contractor | 120h |  | 7,200 | 7,200 |  |
| 60 | 1.7.4 | Install duct in ceiling plenum space |  | 3w | 2016-04-11 | 2016-04-29 | 59 |  |  | 2016-04-11 | 2016-04-29 | 3w | 0d |  | HVAC Contractor | 120h |  | 7,200 | 7,200 |  |
| 61 | 1.7.5 | Install ceiling grid |  | 2w | 2016-05-02 | 2016-05-13 | 60 |  |  | 2016-05-02 | 2016-05-13 | 2w | 0d |  | Drywall Contractor | 80h |  | 4,800 | 4,800 |  |
| 62 | 1.7.6 | Install ceiling tile |  | 2w | 2016-05-16 | 2016-05-27 | 61 |  |  | 2016-05-16 | 2016-05-27 | 2w | 0d |  | Drywall Contractor | 80h |  | 4,800 | 4,800 |  |
| 63 | 1.7.7 | Hang wallpaper |  | 2w | 2016-05-16 | 2016-05-27 | 61 |  |  | 2016-05-16 | 2016-05-27 | 2w | 0d |  | Painting Contractor | 80h |  | 5,600 | 5,600 |  |
| 64 | 1.7.8 | Install building carpet |  | 1.5mo | 2016-03-22 | 2016-05-02 | 58FS+1d |  |  | 2016-03-22 | 2016-05-02 | 1.5mo | 19d | 0d | Carpet Contractor | 240h |  | 14,400 | 14,400 |  |
| 65 | 1.7.9 | Install hardware, equipment and accessories |  | 3w | 2016-03-22 | 2016-04-11 | 58FS+1d |  |  | 2016-03-22 | 2016-04-11 | 3w | 34d | 0d | G.C. Finish Carpenter Crew | 120h |  | 6,000 | 6,000 |  |
| 66 | 1.7.10 | Complete interior and exterior sod and plantings |  | 2w | 2016-03-22 | 2016-04-04 | 58FS+1d |  |  | 2016-03-22 | 2016-04-04 | 2w | 39d | 0d | Landscape Contractor | 80h |  | 4,800 | 4,800 |  |
| 67 | 1.7.11 | Building Finishes inspection | milestone | 0d | 2016-04-04 | 2016-04-04 | 66 |  |  | 2016-04-04 | 2016-04-04 | 0d | 39d | 0d |  |  |  |  |  |  |
| 68 | 1.8 | **Heating and Ventilating - AC** |  | 72d | 2015-11-02 A | 2016-02-12 |  | 15% | 61.44d | 2015-11-02 | 2016-02-12 | 72d | 0d |  |  | 600h | 88h | 36,000 | 36,000 | 5,280 |
| 69 | 1.8.1 | Set equipment in mechanical room |  | 2w | 2015-12-09 | 2015-12-22 | 17 |  |  | 2015-12-09 | 2015-12-22 | 2w | 75d | 0d | HVAC Contractor | 80h |  | 4,800 | 4,800 |  |
| 70 | 1.8.2 | Rough-in mechanical in masonry walls |  | 4w | 2015-11-02 A | 2015-11-27 |  | 30% | 2.8w | 2015-11-02 | 2015-11-27 | 4w | 0d |  | HVAC Contractor | 160h | 48h | 9,600 | 9,600 | 2,880 |
| 71 | 1.8.3 | Rough-in mechanical in drywall walls |  | 2w | 2015-11-02 A | 2015-11-13 |  | 50% | 1w | 2015-11-02 | 2015-11-13 | 2w | 0d |  | HVAC Contractor | 80h | 40h | 4,800 | 4,800 | 2,400 |
| 72 | 1.8.4 | Install duct in building chase |  | 3w | 2015-12-23 | 2016-01-15 | 69, 70 |  |  | 2015-12-23 | 2016-01-15 | 3w | 75d | 0d | HVAC Contractor | 120h |  | 7,200 | 7,200 |  |
| 73 | 1.8.5 | Set HVAC trim and test and balance system |  | 4w | 2016-01-18 | 2016-02-12 | 72 |  |  | 2016-01-18 | 2016-02-12 | 4w | 75d | 0d | HVAC Contractor | 160h |  | 9,600 | 9,600 |  |
| 74 | 1.8.6 | Roug-in, HVAC inspection | milestone | 0d | 2016-02-12 | 2016-02-12 | 73 |  |  | 2016-02-12 | 2016-02-12 | 0d | 75d | 0d |  |  |  |  |  |  |
| 75 | 1.9 | **Final Clean-up and Occupancy** |  | 14d? | 2015-11-02 | 2015-11-19 |  |  |  | 2015-11-02 | 2015-11-19 | 14d | 117.25d | 0d |  | 96h |  | 5,440 | 5,440 |  |
| 76 | 1.9.1 | Install hard tile flooring in common areas |  | 1w | 2015-11-02 | 2015-11-06 |  |  |  | 2015-11-02 | 2015-11-06 | 1w | 117.25d | 0d | Tile Contractor | 40h |  | 2,400 | 2,400 |  |
| 77 | 1.9.2 | Clean hard tile floors |  | 4d | 2015-11-09 | 2015-11-12 | 76 |  |  | 2015-11-09 | 2015-11-12 | 4d | 117.25d | 0d | Tile Contractor [50%] | 16h |  | 960 | 960 |  |
| 78 | 1.9.3 | Remove debris from building and do final clean-up |  | 4d | 2015-11-13 | 2015-11-18 | 77 |  |  | 2015-11-13 | 2015-11-18 | 4d | 117.25d | 0d | G.C. Labor Crew | 32h |  | 1,600 | 1,600 |  |
| 79 | 1.9.4 | Substantial completion date |  | 1d? | 2015-11-19 | 2015-11-19 | 78 |  |  | 2015-11-19 | 2015-11-19 | 1d | 133d | 0d | G.C. Superintendent | 8h |  | 480 | 480 |  |

| ID | WBS | Task | Type | Duration | Start | Finish | Predecessors | Baseline start | Baseline finish | Baseline duration | Total slack | Free slack | Resources | Work | Cost | Baseline cost |
| --- | --- | --- | --- | --- | --- | --- | --- | --- | --- | --- | --- | --- | --- | --- | --- | --- |
| 80 | 1.10 | **Complete Final Inspections** |  | 3.75d? | 2015-11-19 | 2015-11-24 |  | 2015-11-19 | 2015-11-24 | 3.75d | 117.25d | 0d |  | 30h | 1,930 | 1,930 |
| 81 | 1.10.1 | Complete elevator inspection and certification |  | 0.5d | 2015-11-19 | 2015-11-19 | 78 | 2015-11-19 | 2015-11-19 | 0.5d | 117.25d | 0d | Elevator Contractor | 4h | 240 | 240 |
| 82 | 1.10.2 | Perform architect's inspection |  | 1d? | 2015-11-19 | 2015-11-20 | 78, 81 | 2015-11-19 | 2015-11-20 | 1d | 117.25d | 0d | G.C. Superintendent [50%]; G.C. Project Management [50%] | 8h | 520 | 520 |
| 83 | 1.10.3 | Perform local building agency inspection |  | 1d? | 2015-11-20 | 2015-11-23 | 82 | 2015-11-20 | 2015-11-23 | 1d | 117.25d | 0d | G.C. Project Management [50%]; G.C. Superintendent [50%] | 8h | 520 | 520 |
| 84 | 1.10.4 | Perform Fire Marshal's inspection |  | 10h | 2015-11-23 | 2015-11-24 | 83 | 2015-11-23 | 2015-11-24 | 10h | 117.25d | 0d | G.C. Superintendent [50%]; G.C. Project Management [50%] | 10h | 650 | 650 |
| 85 | 1.10.5 | Construction final notice | milestone | 0d | 2015-11-24 | 2015-11-24 | 84 | 2015-11-24 | 2015-11-24 | 0d | 130.25d | 0d |  |  |  |  |
| 86 | 1.11 | Complete punch list items from all inspections |  | 2w | 2015-11-24 | 2015-12-08 | 84 | 2015-11-24 | 2015-12-08 | 2w | 117.25d | 0d | G.C. Superintendent [11%]; G.C. Labor Crew [11%]; Plumbing Contractor [11%]; Electric Contractor [11%]; HVAC Contractor [11%]; Drywall Contractor [11%]; Carpet Contractor [11%]; Painting Contractor [11%]; Paving Contractor [11%] | 79.2h | 4,752 | 4,752 |
| 87 | 1.12 | Obtain certificate of occupancy |  | 2d | 2015-12-08 | 2015-12-10 | 86 | 2015-12-08 | 2015-12-10 | 2d | 117.25d | 0d | G.C. Project Management | 16h | 1,120 | 1,120 |
| 88 | 1.13 | Issue final completion documents including warranties |  | 1d? | 2015-12-08 | 2015-12-09 | 86 | 2015-12-08 | 2015-12-09 | 1d | 118.25d | 0d | G.C. Project Management | 8h | 560 | 560 |
| 89 | 1.14 | Issue final request for payment |  | 1d? | 2015-12-10 | 2015-12-11 | 87, 88 | 2015-12-10 | 2015-12-11 | 1d | 117.25d | 0d | G.C. Project Management [33%]; G.C Accounting [33%]; G.C. General Management [33%] | 7.92h | 554.4 | 554.4 |
| 90 | 1.15 | Office building receptions | milestone | 0d | 2015-12-09 | 2015-12-09 | 88 | 2015-12-09 | 2015-12-09 | 0d | 119.25d | 0d |  |  |  |  |
